# rt-smart中短期研发任务列表

Schedule from a web Gantt chart, 2024-03-13 to 2024-03-26.
Saturdays and Sundays are off

## Schedule

| ID | WBS | Task | Duration | Start | Finish | inPeople |
| --- | --- | --- | --- | --- | --- | --- |
| 2 | 1 | **系统性能指标测试** | 8d | 2024-03-13 | 2024-03-22 | 王枭尧 |
| 3 | 1.1 | **系统吞吐指标** | 1d | 2024-03-13 | 2024-03-13 | 王枭尧 |
| 4 | 1.1.1 | dhrystone CPU跑分 | 1d | 2024-03-13 | 2024-03-13 | 王枭尧 |
| 5 | 1.1.2 | mbw内存指标 | 1d | 2024-03-13 | 2024-03-13 | 王枭尧 |
| 6 | 1.1.3 | iozone 文件系统、磁盘IO指标（注意参数来区分） | 1d | 2024-03-13 | 2024-03-13 | 王枭尧 |
| 7 | 1.1.4 | unixbeach套件指标 | 1d | 2024-03-13 | 2024-03-13 | 王枭尧 |
| 8 | 1.1.5 | iperf 千兆网吞吐 | 1d | 2024-03-13 | 2024-03-13 | 王枭尧 |
| 9 | 1.2 | **实时性指标测试** | 2d | 2024-03-18 | 2024-03-19 | 张宪顺 |
| 10 | 1.2.1 | 中断实时性指标 | 1d | 2024-03-18 | 2024-03-18 | 张宪顺 |
| 11 | 1.2.2 | cyclictest指标 | 1d | 2024-03-18 | 2024-03-18 | 张宪顺 |
| 12 | 1.2.3 | 任务抖动 | 2d | 2024-03-18 | 2024-03-19 | 张宪顺 |
| 13 | 1.3 | **参考对比OS** | 3d | 2024-03-20 | 2024-03-22 | 张宪顺 |
| 14 | 1.3.1 | linux必选 | 3d | 2024-03-20 | 2024-03-22 | 张宪顺 |
| 15 | 1.3.2 | Zephyr（dhrystone,irq lantency,任务抖动,iperf） | 2d | 2024-03-20 | 2024-03-21 | 方健舟 |
| 16 | 1.3.3 | freeRTOS（dhrystone,irq lantency,任务抖动,iperf） | 1d | 2024-03-22 | 2024-03-22 | 张宪顺 |
| 17 | 1.3.4 | threadx（dhrystone,irq lantency,任务抖动,iperf） | 1d | 2024-03-22 | 2024-03-22 | 张宪顺 |
| 18 | 2 | **内部调度器优化** | 7d | 2024-03-14 | 2024-03-22 | 王枭尧 |
| 19 | 2.1 | 优化follow主线内核 | 1d | 2024-03-14 | 2024-03-14 | 王枭尧 |
| 20 | 2.2 | 优化做到上述各指标有明显优势 | 7d | 2024-03-14 | 2024-03-22 | 王枭尧 |
| 21 | 3 | **用户态性能指标** | 5d | 2024-03-18 | 2024-03-22 | 王枭尧 |
| 22 | 3.1 | 时间相关接口精度测试（nanosleep类/clock类/time类） | 2d | 2024-03-18 | 2024-03-19 | 赵茂升 |
| 23 | 3.2 | 用户态多进程吞吐测试（10、100、1000个....任务创建速度、实时性指标测试） | 3d | 2024-03-20 | 2024-03-22 | 张宪顺 |
| 24 | 3.3 | 可考虑解决用户态iperf跑分低的问题，给出优化方案再决定是否优化 | 1d | 2024-03-20 | 2024-03-20 | 赵茂升 |
| 25 | 3.4 | pthread 性能测试（实时性测试，吞吐测试） | 2d | 2024-03-21 | 2024-03-22 | 赵茂升 |

| ID | WBS | Task | Duration | Start | Finish | inPeople |
| --- | --- | --- | --- | --- | --- | --- |
| 26 | 4 | **驱动框架完善** | 10d | 2024-03-13 | 2024-03-26 |  |
| 27 | 4.1 | PCIe驱动代码完善（可扩展以太网、WiFi/BT、SSD、B2B） | 10d | 2024-03-13 | 2024-03-26 | 张世争 |
| 28 | 4.2 | 新设备树框架各个模块设计、使用文档完善 | 1d | 2024-03-13 | 2024-03-13 | 方健舟 |
| 29 | 5 | **自动化测试** | 1d | 2024-03-13 | 2024-03-13 |  |
| 30 | 5.1 | 内核测试用例整理分类 | 1d | 2024-03-13 | 2024-03-13 |  |
| 31 | 5.2 | 梳理内核模块测试用例 | 1d | 2024-03-13 | 2024-03-13 |  |
| 32 | 5.3 | 完善内核模块测试用例（如signalfd/eventfd/epoll/timerfd/uds等等） | 1d | 2024-03-13 | 2024-03-13 |  |
| 33 | 5.4 | 所有测试用例上CI，能出测试报告 | 1d | 2024-03-13 | 2024-03-13 |  |
| 34 | 5.5 | 计划好重大feature、patch、timeline做好回归测试、压力测试 | 1d | 2024-03-13 | 2024-03-13 |  |
| 35 | 5.6 | 搭建固定长久的自动化测试环境，分别可建立多平台，多模式，多配置覆盖全，例如：STM32/RK35xx/A1000/QEMU，重点关注SMP=1，SMP=N的情况 | 1d | 2024-03-13 | 2024-03-13 |  |
| 36 | 6 | **模块组件完善** | 1d | 2024-03-13 | 2024-03-13 |  |
| 37 | 6.1 | 内部LWIP整理 | 1d | 2024-03-13 | 2024-03-13 |  |
| 38 | 6.2 | ukernel整理（开放procfs，是否开放signalfd/eventfd这类系统功能模块？） | 1d | 2024-03-13 | 2024-03-13 |  |
| 39 | 7 | **系统工具完善** | 1d | 2024-03-13 | 2024-03-13 |  |
| 40 | 7.1 | 将之前做的工具类完善（kasan/ftrace/strace/gdb/coredump） | 1d | 2024-03-13 | 2024-03-13 |  |
| 41 | 7.2 | 整理出给用户能看懂的使用手册 | 1d | 2024-03-13 | 2024-03-13 |  |
| 42 | 8 | **POSIX兼容性完善** | 1d | 2024-03-13 | 2024-03-13 |  |
| 43 | 8.1 | 评估musl libc是否需要先升级再做POSIX完善 | 1d | 2024-03-13 | 2024-03-13 |  |
| 44 | 8.2 | 评估内核libc是否重构 | 1d | 2024-03-13 | 2024-03-13 |  |
| 45 | 8.3 | 评估系统调用内核态实现整理优化 | 1d | 2024-03-13 | 2024-03-13 |  |
| 46 | 8.4 | 基于以上三点评估或推进情况，接着推进POSIX兼容PSE53为目标去完善 | 1d | 2024-03-13 | 2024-03-13 |  |
| 47 | 8.5 | 收集所有可用的posix测试用例，整理，修复，达到可用，并有文档查阅、索引对应到具体用例 | 1d | 2024-03-13 | 2024-03-13 |  |
| 48 | 8.6 | 建立POSIX内部测试环境，可出报告 | 1d | 2024-03-13 | 2024-03-13 |  |
| 49 | 8.7 | 先从开源测试用例下手，再考虑推进POSIX官方认证流程 | 1d | 2024-03-13 | 2024-03-13 |  |

| ID | WBS | Task | Duration | Start | Finish |
| --- | --- | --- | --- | --- | --- |
| 50 | 9 | **应用程序生态方向** | 1d | 2024-03-13 | 2024-03-13 |
| 51 | 9.1 | tmux会近期推进完 | 1d | 2024-03-13 | 2024-03-13 |
| 52 | 9.2 | busybox 部分功能可继续考虑推进完善（如和procfs功能相关的一些命令） | 1d | 2024-03-13 | 2024-03-13 |
| 53 | 9.3 | 能通过CI构建出通用的基本版本smart的rootfs(busybox(支持init、ash、jobcontrol等特性)，ldso，其它必要的依赖lib项、资源文件，目录结构等) | 1d | 2024-03-13 | 2024-03-13 |
